Schedule from MS Project, 2011-01-13 to 2012-03-02, A marks actual dates.

## Calendars

- Standard: Mon-Fri 08:00-12:00, 13:00-17:00; Sat-Sun off. Exceptions (off unless hours are given): 2011-05-30, 2011-07-04, 2011-09-05.

## Resources

| Resource |
| --- |
| Prasad |
| Dan |
| Vijay |
| Xiaoling |
| Aynur |
| Greg |
| (Xiaoling) |

## Schedule

| ID | WBS | Task | Type | Duration | Start | Finish | Predecessors | Complete | Constraint | Resources | Work | Actual work |
| --- | --- | --- | --- | --- | --- | --- | --- | --- | --- | --- | --- | --- |
| 3 | 1 | **SDK 4.2.3** |  | 50.7d | 2011-03-15 A | 2011-05-24 A |  | 100% |  |  | 392h | 392h |
| 4 | 1.1 | GF 30729 Provide option to generate JUnit Tests for Logical Model Domain classes [already done] | milestone | 0d | 2011-03-15 A | 2011-03-15 A |  | 100% | start no earlier than 2011-03-15 |  |  |  |
| 5 | 1.2 | GF 30749 Third-Party Jars within the Code Generation Process |  | 5d | 2011-03-15 A | 2011-03-21 A |  | 100% | start no earlier than 2011-03-15 | Dan [75%] | 30h | 30h |
| 6 | 1.3 | GF 30753 Generation of the "not-null" Attribute with the "property" Element Node (not-null constraints) |  | 3d | 2011-03-30 A | 2011-04-01 A |  | 100% | start no earlier than 2011-03-30 | Vijay | 24h | 24h |
| 7 | 1.4 | GF 30748 Bi-directional self-associations |  | 5d | 2011-04-04 A | 2011-04-08 A |  | 100% | start no earlier than 2011-04-04 | Vijay | 40h | 40h |
| 8 | 1.5 | **GF 30510 Support (code generation) for interfaces** |  | 9d | 2011-03-30 A | 2011-04-11 A |  | 100% |  |  | 72h | 72h |
| 9 | 1.5.1 | Design |  | 2d | 2011-03-30 A | 2011-03-31 A |  | 100% | start no earlier than 2011-03-30 | Prasad | 16h | 16h |
| 10 | 1.5.2 | XMI Handler |  | 3d | 2011-04-01 A | 2011-04-05 A | 9 | 100% |  | Prasad | 24h | 24h |
| 11 | 1.5.3 | Code generation |  | 3d | 2011-04-06 A | 2011-04-08 A | 10 | 100% |  | Prasad | 24h | 24h |
| 12 | 1.5.4 | Test |  | 1d | 2011-04-11 A | 2011-04-11 A | 11 | 100% |  | Prasad | 8h | 8h |
| 13 | 1.6 | Dev testing and documentation |  | 4d | 2011-04-12 A | 2011-04-15 A | 4, 5, 6, 7, 12 | 100% |  | Prasad | 32h | 32h |
| 14 | 1.7 | Ivy support (XMI handler) |  | 2d | 2011-04-18 A | 2011-04-19 A | 13 | 100% |  | Prasad [25%] | 4h | 4h |
| 15 | 1.8 | QA test plan |  | 3d | 2011-04-14 A | 2011-04-18 A | 13FF | 100% | must start on 2011-04-14 | Xiaoling | 24h | 24h |
| 16 | 1.9 | QA |  | 9d | 2011-04-20 A | 2011-05-02 A | 14, 15 | 100% |  | Xiaoling | 72h | 72h |
| 17 | 1.10 | QA support |  | 7d | 2011-04-20 A | 2011-04-28 A | 16SS | 100% |  | Prasad [25%] | 14h | 14h |
| 18 | 1.11 | Optional QA for 30508, 30510, 30511, 30524 |  | 10d | 2011-05-09 A | 2011-05-24 A | 16 | 100% | start no earlier than 2011-05-09 | Xiaoling | 80h | 80h |
| 21 | 2 | **SDK 4.2.3 alternate database testing** |  | 18d? | 2011-06-08 A | 2011-07-01 A |  | 100% |  |  | 112h | 112h |
| 22 | 2.1 | Dev-supplied JUnits on Oracle |  | 2d | 2011-06-14 A | 2011-06-15 A |  | 100% | start no earlier than 2011-06-14 | Xiaoling | 16h | 16h |
| 23 | 2.2 | Smoke-test and 4.2.3 regression on Oracle |  | 3d | 2011-06-16 A | 2011-06-20 A | 22 | 100% |  | Xiaoling | 24h | 24h |
| 24 | 2.3 | Postgres installation issues |  | 5d? | 2011-06-08 A | 2011-06-14 A |  | 100% | start no earlier than 2011-06-08 |  |  |  |
| 25 | 2.4 | Build/deployment problems with Postgres |  | 2d | 2011-06-21 A | 2011-06-22 A | 24, 23 | 100% |  | Xiaoling | 16h | 16h |
| 26 | 2.5 | Dev-supplied JUnits on Postgres |  | 2d | 2011-06-23 A | 2011-06-24 A | 23, 25, 24 | 100% |  | Xiaoling | 16h | 16h |
| 27 | 2.6 | Smoke-test and 4.2.3 regression on Postgres |  | 5d | 2011-06-27 A | 2011-07-01 A | 26 | 100% |  | Xiaoling | 40h | 40h |
| 30 | 3 | **GF 31030 - CSM/UPT patch for EMMES (UPT-Tomcat support)** |  | 44d? | 2011-04-21 A | 2011-06-22 A |  | 100% |  |  | 149.46h | 149.46h |
| 31 | 3.1 | Installation instructions for Tomcat |  | 3d | 2011-04-21 A | 2011-05-04 A |  | 100% | start no earlier than 2011-04-21 | Prasad [75%] | 17.46h | 17.46h |
| 32 | 3.2 | UPT fixes |  | 6d | 2011-04-25 A | 2011-05-02 A |  | 100% | start no earlier than 2011-04-25 | Prasad [75%] | 36h | 36h |
| 33 | 3.3 | packaging |  | 1d | 2011-05-12 A | 2011-05-12 A | 32 | 100% | start no earlier than 2011-05-12 | Prasad | 8h | 8h |
| 34 | 3.4 | QA (limited to Tomcat and mySQL) |  | 7d | 2011-05-13 A | 2011-05-23 A | 33 | 100% | start no earlier than 2011-05-04 | Aynur | 56h | 56h |
| 35 | 3.5 | Release activities |  | 2d? | 2011-05-24 A | 2011-05-25 A | 34 | 100% |  | Prasad | 16h | 16h |

| ID | WBS | Task | Duration | Start | Finish | Predecessors | Complete | Remaining | Total slack | Constraint | Resources | Work | Actual work |
| --- | --- | --- | --- | --- | --- | --- | --- | --- | --- | --- | --- | --- | --- |
| 36 | 3.6 | **Alternate distribution packages** | 12d | 2011-06-07 A | 2011-06-22 A |  | 100% |  |  |  |  | 16h | 16h |
| 37 | 3.6.1 | Smoke-test GUI installer distribution | 4d | 2011-06-07 A | 2011-06-10 A |  | 100% |  |  | start no earlier than 2011-06-07 | Greg [25%] | 8h | 8h |
| 38 | 3.6.2 | Smoke-test upgrade distribution | 4d | 2011-06-15 A | 2011-06-22 A |  | 100% |  |  | start no earlier than 2011-06-15 | Greg [25%] | 8h | 8h |
| 41 | 4 | **Technology stack upgrade to 2011 "current" and "future"** | 98d? | 2011-05-13 A | 2011-09-30 |  | 36% | 62.5d? | 0d |  |  | 1260h | 542.42h |
| 42 | 4.1 | CLM/LLT (base CLM only, CSM relies on CLM) | 1d | 2011-05-13 A | 2011-05-13 A |  | 100% |  |  | start no earlier than 2011-05-13 | Prasad | 8h | 8h |
| 43 | 4.2 | **CSM/UPT/CGMM** | 17d | 2011-05-16 A | 2011-06-08 A | 42 | 100% |  |  |  |  | 88h | 88h |
| 44 | 4.2.1 | JDK (migrate - done for a patch) | 1d | 2011-05-16 A | 2011-05-16 A |  | 100% |  |  | start no earlier than 2011-05-11 | Prasad | 8h | 8h |
| 45 | 4.2.2 | JBoss (migrate - done for a patch) | 1d | 2011-05-17 A | 2011-05-17 A | 44 | 100% |  |  |  | Prasad | 8h | 8h |
| 46 | 4.2.3 | UPT/Tomcat (migrate - in progress for a patch) | 1d | 2011-05-18 A | 2011-05-18 A | 45 | 100% |  |  |  | Prasad | 8h | 8h |
| 47 | 4.2.4 | Other | 2d | 2011-05-23 A | 2011-05-26 A | 46 | 100% |  |  | start no earlier than 2011-05-23 | Prasad | 16h | 16h |
| 48 | 4.2.5 | CGMM | 6d | 2011-06-01 A | 2011-06-08 A |  | 100% |  |  | start no earlier than 2011-06-01 | Prasad | 48h | 48h |
| 49 | 4.3 | CLM/LLT (LLT relies on CSM) | 2d | 2011-05-27 A | 2011-05-31 A | 43 | 100% |  |  |  | Prasad | 16h | 16h |
| 50 | 4.4 | XMI Handler (initial) | 2d | 2011-06-09 A | 2011-06-10 A |  | 100% |  |  | start no earlier than 2011-06-09 | Prasad [50%] | 8h | 8h |
| 51 | 4.5 | **SDK** | 15d | 2011-06-14 A | 2011-07-05 A | 50 | 100% |  |  |  |  | 72h | 72h |
| 52 | 4.5.1 | JDK | 1d | 2011-06-14 A | 2011-06-14 A |  | 100% |  |  | must start on 2011-06-14 | Prasad | 8h | 8h |
| 53 | 4.5.2 | Jboss | 1d | 2011-06-15 A | 2011-06-15 A | 52 | 100% |  |  |  | Prasad | 8h | 8h |
| 54 | 4.5.3 | Spring | 3d | 2011-06-22 A | 2011-06-24 A | 53 | 100% |  |  | must start on 2011-06-22 | Prasad [50%] | 12h | 12h |
| 55 | 4.5.4 | Hibernate | 2d | 2011-06-27 A | 2011-06-28 A | 54 | 100% |  |  |  | Prasad | 16h | 16h |
| 56 | 4.5.5 | Other technologies | 2d | 2011-06-29 A | 2011-06-30 A | 55 | 100% |  |  |  | Prasad [75%] | 12h | 12h |
| 57 | 4.5.6 | CQL->HQL workaround and Junit updates [aborted] | 2d | 2011-07-01 A | 2011-07-05 A | 56 | 100% |  |  | start no earlier than 2011-07-01 | Prasad | 16h | 16h |
| 58 | 4.6 | XMI Handler (formalized) | 1d? | 2011-07-06 A | 2011-07-06 A | 51 | 100% |  |  |  | Prasad | 8h | 8h |
| 59 | 4.7 | **Refocus from 2010 to 2011 "current" tech stack** | 4d | 2011-07-07 A | 2011-07-12 A |  | 100% |  |  |  |  | 32h | 32h |
| 60 | 4.7.1 | Re-version CLM API 4.2 to 4.1.1 | 1d | 2011-07-07 A | 2011-07-07 A |  | 100% |  |  | start no earlier than 2011-07-07 | Prasad | 8h | 8h |
| 61 | 4.7.2 | Re-version CSM 4.3 to 4.2.3 | 1d | 2011-07-08 A | 2011-07-08 A | 60 | 100% |  |  | start no earlier than 2011-07-08 | Prasad | 8h | 8h |
| 62 | 4.7.3 | Apply tech upgrades against SDK 4.4 to make 4.4.1 | 1.5d | 2011-07-11 A | 2011-07-12 A | 60 | 100% |  |  | start no earlier than 2011-07-11 | Prasad | 12h | 12h |
| 63 | 4.7.4 | Re-version CLM LLT 4.2 to 4.1.1 | 0.5d | 2011-07-12 A | 2011-07-12 A | 62 | 100% |  |  | start no earlier than 2011-07-12 | Prasad | 4h | 4h |

| ID | WBS | Task | Type | Duration | Start | Finish | Predecessors | Complete | Remaining | Total slack | Free slack | Constraint | Resources | Work | Actual work |
| --- | --- | --- | --- | --- | --- | --- | --- | --- | --- | --- | --- | --- | --- | --- | --- |
| 64 | 4.8 | **2011 "future"** |  | 4d | 2011-08-02 | 2011-08-05 | 166 |  |  | 7d | 0d | start no earlier than 2011-08-02 |  | 24h |  |
| 65 | 4.8.1 | CLM 4.1.2 (Spring update) |  | 1d | 2011-08-02 | 2011-08-02 |  |  |  | 7d | 0d | start no earlier than 2011-07-13 | Prasad [75%] | 6h |  |
| 66 | 4.8.2 | CSM 4.2.4 (Spring update) |  | 1d | 2011-08-03 | 2011-08-03 | 65 |  |  | 7d | 0d | start no earlier than 2011-07-13 | Prasad [75%] | 6h |  |
| 67 | 4.8.3 | SDK 4.5 (includes 4.2.3 features) |  | 2d | 2011-08-04 | 2011-08-05 | 66 |  |  | 7d |  | start no earlier than 2011-07-13 | Prasad [75%] | 12h |  |
| 68 | 4.9 | Workbench ("current" and "future") |  | 5d | 2011-08-08 | 2011-08-12 | 64 |  |  | 7d | 0d |  | Prasad [75%] | 30h |  |
| 69 | 4.10 | ISO 21090 ("current" and "future") |  | 5d | 2011-08-15 | 2011-08-19 | 68 |  |  | 7d | 0d |  | Prasad [75%] | 30h |  |
| 70 | 4.11 | (WebSSO?) | milestone | 0d | 2011-08-19 | 2011-08-19 | 69 |  |  | 29d |  |  |  |  |  |
| 71 | 4.12 | Revisit direct CQL support in SDK 4.5 [remove, no longer applicable] | milestone | 0d | 2011-07-13 | 2011-07-13 |  |  |  | 57d |  | start no earlier than 2011-07-13 |  |  |  |
| 72 | 4.13 | Consider CQL2 support in SDK 4.5 [remove, no longer applicable] | milestone | 0d | 2011-07-13 | 2011-07-13 |  |  |  | 57d |  | start no earlier than 2011-07-13 |  |  |  |
| 73 | 4.14 | **QA 2010 "current" [stopped]** |  | 8d | 2011-06-27 A | 2011-07-07 A |  | 100% |  |  |  |  |  | 80h | 80h |
| 74 | 4.14.1 | CLM/CSM [stopped] |  | 8d | 2011-06-27 A | 2011-07-07 A | 49 | 100% |  |  |  | start no earlier than 2011-06-27 | Aynur | 64h | 64h |
| 75 | 4.14.2 | SDK [stopped] |  | 2d | 2011-07-06 A | 2011-07-07 A | 51 | 100% |  |  |  | start no earlier than 2011-07-05 | Xiaoling | 16h | 16h |
| 76 | 4.15 | QA support and minor bug fixes (2011 "current") |  | 47d | 2011-07-18 A | 2011-09-21 |  | 25% | 35.25d | 7d |  |  | Prasad [25%] | 94h | 23.5h |
| 77 | 4.16 | SDK 4.4.1 and CSM 4.2.3 bug fixes |  | 5d | 2011-07-18 A | 2011-07-22 A |  | 100% |  |  |  | start no earlier than 2011-07-18 | Prasad [75%] | 30h | 30h |
| 78 | 4.17 | **QA 2011 "current"** |  | 43d? | 2011-07-11 A | 2011-09-08 |  | 28% | 30.76d? | 0d |  |  |  | 572h | 176.92h |
| 79 | 4.17.1 | **CSM 4.2.3** |  | 23d | 2011-07-11 A | 2011-08-10 | 61 | 46% | 12.38d | 10d | 0d |  | Aynur | 184h | 84.92h |
| 80 | 4.17.1.1 | set-up and 1st round |  | 6d | 2011-07-11 A | 2011-07-18 A | 61 | 100% |  |  |  |  |  |  |  |
| 81 | 4.17.1.2 | update test cases (if needed) |  | 1d | 2011-08-02 | 2011-08-02 | 61 |  |  | 10d | 0d | start no earlier than 2011-08-02 |  |  |  |
| 82 | 4.17.1.3 | regression testing of CSM UPT and CSM API with oracle |  | 3d | 2011-08-03 | 2011-08-05 | 81 |  |  | 10d | 0d | start no earlier than 2011-08-02 |  |  |  |
| 83 | 4.17.1.4 | regression testing of CSM UPT and CSM API with postgresql |  | 3d | 2011-08-08 | 2011-08-10 | 82 |  |  | 10d |  | start no earlier than 2011-08-02 |  |  |  |
| 84 | 4.17.2 | CLM 4.1.1 |  | 3d | 2011-08-11 | 2011-08-15 | 63, 79, 80 |  |  | 10d | 0d | start no earlier than 2011-06-27 | Aynur | 24h |  |
| 85 | 4.17.3 | CSM/CLM test report |  | 1d | 2011-08-16 | 2011-08-16 | 79, 84 |  |  | 10d | 0d | start no earlier than 2011-08-02 | Aynur | 8h |  |
| 86 | 4.17.4 | **SDK 4.4.1** |  | 38.5d? | 2011-07-12 A | 2011-09-02 |  | 30% | 27d? | 0d |  |  | Xiaoling | 308h | 92h |
| 87 | 4.17.4.1 | set-up and initial tests |  | 3.5d | 2011-07-12 A | 2011-07-15 A | 62 | 100% |  |  |  |  |  |  |  |
| 88 | 4.17.4.2 | Oracle database including junit tests |  | 8d | 2011-07-18 A | 2011-07-27 A | 87 | 100% |  |  |  |  |  |  |  |
| 89 | 4.17.4.3 | Tomcat 6.0.20 with database Oracle and MySQL, Junit tests |  | 6d | 2011-07-28 | 2011-08-04 | 88 |  |  | 0d |  |  |  |  |  |
| 90 | 4.17.4.4 | jboss 5.1.0 with database Oracle and MySQL, Junit tests |  | 2d | 2011-08-05 | 2011-08-08 | 89 |  |  | 0d |  |  |  |  |  |
| 91 | 4.17.4.5 | Tomcat and Jboss with PostgeSQL database and Junit tests |  | 5d | 2011-08-09 | 2011-08-15 | 90 |  |  | 0d |  |  |  |  |  |
| 92 | 4.17.4.6 | adding and modifying *.java test cases in Junit, local-client, and remote client for Writable API; |  | 2d | 2011-08-16 | 2011-08-17 | 91 |  |  | 0d |  | start no earlier than 2011-08-02 |  |  |  |
| 93 | 4.17.4.7 | creating QTP/PEDAL test cases and run |  | 3d | 2011-08-18 | 2011-08-22 | 92 |  |  | 0d |  | start no earlier than 2011-08-02 |  |  |  |
| 94 | 4.17.4.8 | documentation |  | 1d | 2011-08-23 | 2011-08-23 | 93 |  |  | 0d |  | start no earlier than 2011-08-02 |  |  |  |
| 95 | 4.17.4.9 | 2nd round |  | 8d? | 2011-08-24 | 2011-09-02 | 94 |  |  | 0d |  | start no earlier than 2011-08-02 |  |  |  |
| 96 | 4.17.5 | Workbench 1.0 |  | 3d | 2011-09-06 | 2011-09-08 | 68, 86 |  |  | 0d |  | start no earlier than 2011-06-24 | Xiaoling | 24h |  |
| 97 | 4.17.6 | ISO 21090 library |  | 3d | 2011-08-22 | 2011-08-24 | 69, 85 |  |  | 7d | 0d | start no earlier than 2011-06-24 | Aynur | 24h |  |
| 98 | 4.18 | Release activities 2011 current - concurrent with QA |  | 3d | 2011-09-06 | 2011-09-08 | 78FF |  |  | 2d | 0d | start no earlier than 2011-07-20 |  |  |  |
| 99 | 4.19 | Release activities 2011 "current" - post QA |  | 7d | 2011-09-09 | 2011-09-19 | 78, 98 |  |  | 2d |  |  |  |  |  |
| 100 | 4.20 | (Target release date - 2010 "current") | milestone | 0d | 2011-08-11 | 2011-08-11 |  |  |  | 36d |  | start no earlier than 2011-08-11 |  |  |  |

| ID | WBS | Task | Type | Duration | Start | Finish | Predecessors | Complete | Remaining | Total slack | Free slack | Constraint | Resources | Work | Actual work |
| --- | --- | --- | --- | --- | --- | --- | --- | --- | --- | --- | --- | --- | --- | --- | --- |
| 101 | 4.21 | **QA 2011 "future"** |  | 19d | 2011-08-25 | 2011-09-21 |  |  |  | 0d |  |  |  | 168h |  |
| 102 | 4.21.1 | CSM 4.2.4 |  | 6d | 2011-08-25 | 2011-09-01 | 97 |  |  | 7d | 0d | start no earlier than 2011-07-22 | Aynur | 48h |  |
| 103 | 4.21.2 | CLM 4.1.2 |  | 3d | 2011-09-02 | 2011-09-07 | 102 |  |  | 7d | 0d | start no earlier than 2011-06-27 | Aynur | 24h |  |
| 104 | 4.21.3 | SDK 4.5 |  | 6d | 2011-09-09 | 2011-09-16 | 96 |  |  | 0d |  | start no earlier than 2011-06-24 | Xiaoling | 48h |  |
| 105 | 4.21.4 | Workbench (version?) |  | 3d | 2011-09-19 | 2011-09-21 | 104, 96 |  |  | 0d |  | start no earlier than 2011-06-24 | Xiaoling | 24h |  |
| 106 | 4.21.5 | ISO 21090 library (version?) |  | 3d | 2011-09-08 | 2011-09-12 | 97, 103 |  |  | 7d |  | start no earlier than 2011-06-24 | Aynur | 24h |  |
| 107 | 4.22 | Release activities 2011 "future" - concurrent with QA |  | 3d | 2011-09-19 | 2011-09-21 | 101FF |  |  | 0d |  |  |  |  |  |
| 108 | 4.23 | Release activities 2011 "future" - post QA |  | 7d | 2011-09-22 | 2011-09-30 | 101, 99, 107 |  |  | 0d |  | start no earlier than 2011-07-20 |  |  |  |
| 109 | 4.24 | (Target release date - 2010 "future") | milestone | 0d | 2011-08-25 | 2011-08-25 |  |  |  | 26d |  | start no earlier than 2011-08-25 |  |  |  |
| 112 | 5 | **UPT Improvement Plan** |  | 129.25d? | 2011-03-14 A | 2011-09-14 |  | 73% | 34.44d? | 12.75d |  |  |  | 74h | 62h |
| 113 | 5.1 | Analysis of existing trackers |  | 6d | 2011-03-14 A | 2011-03-21 A |  | 100% |  |  |  | start no earlier than 2011-03-14 | Prasad | 48h | 48h |
| 114 | 5.2 | Requirements gathering with NBIA |  | 20d? | 2011-03-28 A | 2011-04-22 A |  | 100% |  |  |  | start no earlier than 2011-03-28 |  |  |  |
| 115 | 5.3 | Draft project plan development (partial) |  | 2d | 2011-05-13 A | 2011-05-16 A | 113, 114FF | 100% |  |  |  | start no earlier than 2011-05-13 |  |  |  |
| 116 | 5.4 | Internal review of proposed features |  | 0.25d | 2011-05-27 A | 2011-05-27 A | 115 | 100% |  |  |  | start no earlier than 2011-05-27 |  |  |  |
| 117 | 5.5 | **Research on use of systems-hosted older versions** |  | 52d? | 2011-06-13 A | 2011-08-24 | 116 | 81% | 9.63d? | 12.75d | 0d |  |  | 22h | 14h |
| 118 | 5.5.1 | Formulate initial query |  | 1d | 2011-06-13 A | 2011-06-13 A |  | 100% |  |  |  | start no earlier than 2011-06-13 | Greg [25%] | 2h | 2h |
| 119 | 5.5.2 | Lead time and systems response (est.) |  | 10d? | 2011-06-14 A | 2011-06-27 A | 118 | 100% |  |  |  |  |  |  |  |
| 120 | 5.5.3 | Formulate subsequent queries |  | 6d | 2011-06-28 A | 2011-07-06 A | 119 | 100% |  |  |  |  | Greg [25%] | 12h | 12h |
| 121 | 5.5.4 | Lead time and systems response (est.) |  | 5d? | 2011-07-07 A | 2011-07-13 A | 120 | 100% |  |  |  |  |  |  |  |
| 122 | 5.5.5 | Determine why subsequent queries returned no results and re-submit |  | 4d | 2011-08-02 | 2011-08-24 |  |  |  | 12.75d |  | start no earlier than 2011-08-02 | Greg [25%] | 8h |  |
| 123 | 5.5.6 | Lead time and systems response (est.) |  | 1d? | 2011-08-02 | 2011-08-02 |  |  |  | 28.75d |  | start no earlier than 2011-08-02 |  |  |  |
| 124 | 5.6 | Follow up review of proposed features |  | 0.25d | 2011-08-25 | 2011-08-25 | 117 |  |  | 12.75d | 0d | start no earlier than 2011-06-01 |  |  |  |
| 125 | 5.7 | Draft project plan (complete) |  | 2d | 2011-08-25 | 2011-08-29 | 124 |  |  | 12.75d | 0d | start no earlier than 2011-06-27 | Greg [25%] | 4h |  |
| 126 | 5.8 | Review plan with user representatives and amend |  | 10d? | 2011-08-29 | 2011-09-13 | 125 |  |  | 12.75d | 0d |  |  |  |  |
| 127 | 5.9 | Plan approval |  | 1d? | 2011-09-13 | 2011-09-14 | 126 |  |  | 12.75d |  |  |  |  |  |

| ID | WBS | Task | Duration | Start | Finish | Predecessors | Complete | Remaining | Total slack | Free slack | Constraint | Resources | Work | Actual work |
| --- | --- | --- | --- | --- | --- | --- | --- | --- | --- | --- | --- | --- | --- | --- |
| 130 | 6 | **UPT enhancements [changes expected]** | 110d | 2011-10-03 | 2012-03-02 | 112, 41 |  |  | 0d |  |  |  |  |  |
| 131 | 6.1 | GF 30436 Better LDAP integration when adding users to UPT | 5d | 2011-10-03 | 2011-10-07 |  |  |  | 0d |  |  |  |  |  |
| 132 | 6.2 | GF 22524 Authentication - DataSource LoginModule | 3d | 2011-10-10 | 2011-10-12 | 131 |  |  | 0d |  |  |  |  |  |
| 133 | 6.3 | GF 1158/2830 Implement paging for UPT | 10d | 2011-10-13 | 2011-10-26 | 132 |  |  | 0d |  |  |  |  |  |
| 134 | 6.4 | GF 22540/29002/30435 Password changes | 10d | 2011-10-27 | 2011-11-09 | 133 |  |  | 0d |  |  |  |  |  |
| 135 | 6.5 | GF 15527 CSM username field length should be increased to 100 characters | 1d | 2011-11-10 | 2011-11-10 | 134 |  |  | 0d |  |  |  |  |  |
| 136 | 6.6 | GF 19369 Indicate UPT /CSM version names in the Application Header after login | 2d | 2011-11-11 | 2011-11-14 | 135 |  |  | 0d |  |  |  |  |  |
| 137 | 6.7 | GF 631/22236 Password recovery | 5d | 2011-11-15 | 2011-11-21 | 136 |  |  | 0d |  |  |  |  |  |
| 138 | 6.8 | GF 30019 User lockout on unsuccessful logins | 5d | 2011-11-22 | 2011-11-28 | 137 |  |  | 0d |  |  |  |  |  |
| 139 | 6.9 | GF 2913 Add an Active Flag for users | 5d | 2011-11-29 | 2011-12-05 | 138 |  |  | 0d |  |  |  |  |  |
| 140 | 6.10 | GF 24404 UPT GUI installer should validate database connection info | 3d | 2011-12-06 | 2011-12-08 | 139 |  |  | 0d |  |  |  |  |  |
| 141 | 6.11 | GF 30372 Change UPT install.properties file to note properties that must be replaced | 1d | 2011-12-09 | 2011-12-09 | 140 |  |  | 0d |  |  |  |  |  |
| 142 | 6.12 | GF 1154/30433 Synchronization between UPT and supported application | 15d | 2011-12-12 | 2011-12-30 | 141 |  |  | 0d |  |  |  |  |  |
| 143 | 6.13 | GF 24965 Documentation changes from CDL installation | 1d | 2012-01-02 | 2012-01-02 | 142 |  |  | 0d |  |  |  |  |  |
| 144 | 6.14 | GF 24116 Need stronger access control | 10d | 2012-01-03 | 2012-01-16 | 143 |  |  | 0d |  |  |  |  |  |
| 145 | 6.15 | GF 2914 Auto-email new user or associated user | 4d | 2012-01-17 | 2012-01-20 | 144 |  |  | 0d |  |  |  |  |  |
| 146 | 6.16 | User friendly UPT UI | 15d | 2012-01-23 | 2012-02-10 | 145 |  |  | 0d |  |  |  |  |  |
| 147 | 6.17 | Customizable UPT UI | 15d | 2012-02-13 | 2012-03-02 | 146 |  |  | 0d |  |  |  |  |  |
| 150 | 7 | **XMI Handler** | 14d? | 2011-08-25 | 2011-09-14 |  |  |  | 122d |  |  |  | 8h |  |
| 151 | 7.1 | Test use of new XMI Handler modeling features with SIW and document results | 4d | 2011-08-25 | 2011-08-30 |  |  |  | 122d | 0d | start no earlier than 2011-08-25 | Greg [25%] | 8h |  |
| 152 | 7.2 | Coordinate official 1.1 release | 5d? | 2011-08-31 | 2011-09-07 | 151 |  |  | 122d | 0d | start no earlier than 2011-06-29 |  |  |  |
| 153 | 7.3 | Coordinate 1.2 release (tech stack upgrade)? | 5d? | 2011-09-08 | 2011-09-14 | 58, 152 |  |  | 122d |  | start no earlier than 2011-06-30 |  |  |  |
| 156 | 8 | **Analysis** | 109d | 2011-03-22 A | 2011-08-23 |  | 84% | 17.34d | 137d |  |  |  | 238h | 216h |
| 157 | 8.1 | Eclipse/SDK comparison and gap analysis | 5d | 2011-03-22 A | 2011-03-28 A |  | 100% |  |  |  | start no earlier than 2011-03-22 | Prasad | 40h | 40h |
| 158 | 8.2 | User requirements/need for SDK (combined with Eclipse/SDK analysis) | 3d | 2011-04-15 A | 2011-04-19 A |  | 100% |  |  |  | start no earlier than 2011-04-15 | Prasad [75%] | 18h | 18h |
| 159 | 8.3 | caGrid with JBoss 5.1 | 3d | 2011-05-05 A | 2011-05-12 A |  | 100% |  |  |  | start no earlier than 2011-05-05 | Prasad | 24h | 24h |
| 160 | 8.4 | Ideal architecture for separation of SDK and caGrid [incomplete, deferred indefinitely] | 2d | 2011-06-09 A | 2011-06-10 A |  | 100% |  |  |  | start no earlier than 2011-06-09 | Prasad [50%] | 8h | 8h |
| 161 | 8.5 | Test Globus WSRF (caGrid) and JBoss 5.1 | 1d | 2011-06-13 A | 2011-06-13 A |  | 100% |  |  |  | start no earlier than 2011-06-13 | Prasad | 8h | 8h |
| 162 | 8.6 | Evaluate caTissue source with respect to potential use of SDK | 3d | 2011-06-16 A | 2011-06-20 A |  | 100% |  |  |  | start no earlier than 2011-06-16 | Prasad | 24h | 24h |
| 163 | 8.7 | Review and revise caTissue/SDK analysis | 1d | 2011-06-21 A | 2011-06-21 A | 162 | 100% |  |  |  |  | Prasad | 8h | 8h |
| 164 | 8.8 | caTissue Jamboree | 3d | 2011-06-22 A | 2011-06-24 A |  | 100% |  |  |  | finish no earlier than 2011-06-24 | Prasad [50%] | 12h | 12h |
| 165 | 8.9 | NBIA security discussion on federated grid credentials | 2d | 2011-06-29 A | 2011-06-30 A |  | 100% |  |  |  | start no earlier than 2011-06-29 | Prasad [25%] | 4h | 4h |
| 166 | 8.10 | ISO/SDK use - examples and presentation | 3d | 2011-07-13 A | 2011-07-15 A |  | 100% |  |  |  | start no earlier than 2011-07-13 | Prasad | 24h | 24h |
| 167 | 8.11 | SDK capabilities documentation & presentation support | 2d | 2011-07-25 A | 2011-07-26 A |  | 100% |  |  |  | start no earlier than 2011-07-25 | Prasad [75%] | 12h | 12h |
| 168 | 8.12 | ISO/SDK use - examples and presentation (revisited) | 4d | 2011-07-27 A | 2011-08-01 A |  | 100% |  |  |  | start no earlier than 2011-07-27 | Prasad [75%] | 24h | 24h |
| 169 | 8.13 | Ideal architecture for separation of SDK and caGrid | 2d | 2011-08-22 | 2011-08-23 | 69 |  |  | 137d |  | start no earlier than 2011-07-18 | Prasad [75%] | 12h |  |
| 170 | 8.14 | Investigate problem with caGrid-flavored CQL and SDK 4.4 w/ ISO data types despite workaround | 10d | 2011-07-18 A | 2011-08-19 |  | 50% | 5d | 139d |  | start no earlier than 2011-07-18 | Dan [25%] | 20h | 10h |

| ID | WBS | Task | Type | Duration | Start | Finish | Predecessors | Complete | Remaining | Total slack | Free slack | Constraint | Resources | Work | Actual work |
| --- | --- | --- | --- | --- | --- | --- | --- | --- | --- | --- | --- | --- | --- | --- | --- |
| 173 | 9 | **CSM bug fixes (code - no release specified)** |  | 6d | 2011-03-14 A | 2011-03-21 A |  | 100% |  |  |  |  |  | 48h | 48h |
| 174 | 9.1 | GF 29450 CSM – Users locked out due to invalid logins may be (effectively) locked out forever |  | 5d | 2011-03-14 A | 2011-03-18 A |  | 100% |  |  |  | start no earlier than 2011-03-14 | Vijay | 40h | 40h |
| 175 | 9.2 | GF 30372 CSM/UPT - Change UPT install.properties file to note properties that must be replaced |  | 1d | 2011-03-21 A | 2011-03-21 A |  | 100% |  |  |  | start no earlier than 2011-03-21 | Vijay | 8h | 8h |
| 178 | 10 | **SDK 4.1.3 - GF 27529 patch to 4.1.2 (for caBIO)** |  | 0d | 2011-03-14 A | 2011-03-14 |  |  | 0d | 252d |  |  |  |  |  |
| 179 | 10.1 | apply fix for GF 27529 to 4.1.2 [already done] | milestone | 0d | 2011-03-14 A | 2011-03-14 A |  | 100% |  |  |  | start no earlier than 2011-03-14 |  |  |  |
| 180 | 10.2 | QA [low priority] [deferred indefinitely] | milestone | 0d | 2011-03-14 | 2011-03-14 | 179 |  |  | 252d | 0d | start no earlier than 2011-02-17 |  |  |  |
| 181 | 10.3 | Gforge post [no longer applicable] | milestone | 0d | 2011-03-14 | 2011-03-14 | 180 |  |  | 252d |  |  |  |  |  |
| 184 | 11 | **General support to date (only large tasks called out)** |  | 185d? | 2011-01-13 A | 2011-10-03 |  | 89% | 20.21d? | 109d |  |  |  | 198.8h | 186h |
| 185 | 11.1 | General support through 6/3 |  | 53d | 2011-03-22 A | 2011-06-03 A |  | 100% |  |  |  | finish no earlier than 2011-06-03 | Dan [25%] | 106h | 106h |
| 186 | 11.2 | General support 6/6-6/10 |  | 5d | 2011-06-06 A | 2011-06-10 A |  | 100% |  |  |  | start no earlier than 2011-06-06 | Dan [25%] | 10h | 10h |
| 187 | 11.3 | General support 6/13-6/17 |  | 5d | 2011-06-13 A | 2011-06-17 A |  | 100% |  |  |  | start no earlier than 2011-06-13 | Dan [15%] | 6h | 6h |
| 188 | 11.4 | General support 6/20-6/24 |  | 5d | 2011-06-20 A | 2011-06-24 A |  | 100% |  |  |  | start no earlier than 2011-06-20 | Dan [15%] | 6h | 6h |
| 189 | 11.5 | General support 6/27-7/1 |  | 5d | 2011-06-27 A | 2011-07-01 A |  | 100% |  |  |  | start no earlier than 2011-06-27 | Dan [35%] | 14h | 14h |
| 190 | 11.6 | General support 7/5-7/8 |  | 4d | 2011-07-05 A | 2011-07-08 A |  | 100% |  |  |  | start no earlier than 2011-07-05 | Dan [15%] | 4.8h | 4.8h |
| 191 | 11.7 | General support 7/11-7/15 |  | 5d | 2011-07-11 A | 2011-07-15 A |  | 100% |  |  |  | start no earlier than 2011-07-11 | Dan [5%] | 2h | 2h |
| 192 | 11.8 | caTissue |  | 6d | 2011-07-11 A | 2011-07-18 A |  | 100% |  |  |  | start no earlier than 2011-07-11 | Greg [25%] | 12h | 12h |
| 193 | 11.9 | General support 7/18-7/23 |  | 5d | 2011-07-18 A | 2011-07-22 A |  | 100% |  |  |  | start no earlier than 2011-07-18 | Dan [10%] | 4h | 4h |
| 194 | 11.10 | 508 remediation (manual tests) for hosted UPT |  | 3d | 2011-07-20 A | 2011-07-22 A |  | 100% |  |  |  | start no earlier than 2011-07-20 | Greg [25%] | 6h | 6h |
| 195 | 11.11 | General support 7/25-7/29 |  | 5d | 2011-07-25 A | 2011-07-29 A |  | 100% |  |  |  | start no earlier than 2011-07-25 | Dan [15%] | 6h | 6h |
| 196 | 11.12 | caTissue (caGrid/SDK integration) |  | 4d | 2011-07-25 A | 2011-07-29 A |  | 100% |  |  |  | start no earlier than 2011-07-25 | Greg [25%] | 8h | 8h |
| 197 | 11.13 | General support 8/1-8/5 |  | 5d | 2011-08-01 A | 2011-08-05 |  | 20% | 4d | 149d |  | start no earlier than 2011-08-01 | Dan [15%] | 6h | 1.2h |
| 198 | 11.14 | Document migration activities/issues moving from SDK 4.0 to 4.4 (using caDSR as an example) |  | 1d? | 2011-10-03 | 2011-10-03 | 41 |  |  | 109d |  | start no earlier than 2011-07-05 | Prasad | 8h |  |
| 199 | 11.15 | Write SDK product support FAQ’s and post on KC |  | 5d? | 2011-01-13 | 2011-01-19 |  |  |  | 289d |  | start no earlier than 2011-01-13 |  |  |  |
| 200 | 11.16 | Write CSM product support FAQ’s and post on KC |  | 3d? | 2011-01-13 | 2011-01-17 |  |  |  | 291d |  | start no earlier than 2011-01-13 |  |  |  |

| ID | WBS | Task | Duration | Start | Finish | Complete | Remaining | Total slack | Constraint | Resources | Work | Actual work |
| --- | --- | --- | --- | --- | --- | --- | --- | --- | --- | --- | --- | --- |
| 203 | 12 | **Project Management to date (only large tasks called out)** | 102d | 2011-03-14 A | 2011-08-04 | 97% | 3.06d | 150d |  |  | 322h | 316h |
| 204 | 12.1 | PM and misc work through 6/3 | 59d | 2011-03-14 A | 2011-06-03 A | 100% |  |  | finish no earlier than 2011-06-03 | Greg [50%] | 236h | 236h |
| 205 | 12.2 | General PM 6/6-6/10 | 5d | 2011-06-06 A | 2011-06-10 A | 100% |  |  | start no earlier than 2011-06-06 | Greg [25%] | 10h | 10h |
| 206 | 12.3 | General PM 6/13-6/17 | 5d | 2011-06-13 A | 2011-06-17 A | 100% |  |  | start no earlier than 2011-06-13 | Greg [25%] | 10h | 10h |
| 207 | 12.4 | Update project management plan | 2d | 2011-06-22 A | 2011-06-23 A | 100% |  |  | start no earlier than 2011-06-22 | Greg [50%] | 8h | 8h |
| 208 | 12.5 | General PM 6/23-6/24 | 2d | 2011-06-23 A | 2011-06-24 A | 100% |  |  | start no earlier than 2011-06-23 | Greg [25%] | 4h | 4h |
| 209 | 12.6 | General PM 6/27-7/1 | 5d | 2011-06-27 A | 2011-07-01 A | 100% |  |  | start no earlier than 2011-06-27 | Greg [25%] | 10h | 10h |
| 210 | 12.7 | General PM 7/5-7/8 | 4d | 2011-07-05 A | 2011-07-08 A | 100% |  |  | start no earlier than 2011-07-05 | Greg [25%] | 8h | 8h |
| 211 | 12.8 | General PM 7/11-7/15 | 5d | 2011-07-11 A | 2011-07-15 A | 100% |  |  | start no earlier than 2011-07-11 | Greg [25%] | 10h | 10h |
| 212 | 12.9 | General PM 7/18-7/23 | 5d | 2011-07-18 A | 2011-07-22 A | 100% |  |  | start no earlier than 2011-07-18 | Greg [25%] | 10h | 10h |
| 213 | 12.10 | General PM 7/25-7/29 | 4d | 2011-07-25 A | 2011-07-29 A | 100% |  |  | start no earlier than 2011-07-25 | Greg [25%] | 8h | 8h |
| 214 | 12.11 | General PM 8/1-8/4 | 4d | 2011-08-01 A | 2011-08-04 | 25% | 3d | 150d | start no earlier than 2011-08-01 | Greg [25%] | 8h | 2h |
| 217 | 13 | **Other unplanned** | 1d? | 2011-01-13 | 2011-01-13 |  |  | 293d |  |  |  |  |
| 218 | 13.1 | 508 compliance review and plan | 1d? | 2011-01-13 | 2011-01-13 |  |  | 293d | start no earlier than 2011-01-13 |  |  |  |
| 219 | 13.2 | ECCF compliance review and plan | 1d? | 2011-01-13 | 2011-01-13 |  |  | 293d | start no earlier than 2011-01-13 |  |  |  |
| 220 | 13.3 | Effect of NCI CBIIT’s Enterprise Security Program on CSM | 1d? | 2011-01-13 | 2011-01-13 |  |  | 293d | start no earlier than 2011-01-13 |  |  |  |
| 221 | 13.4 | Effect of NCI CBIIT’s Enterprise Security Program on CLM | 1d? | 2011-01-13 | 2011-01-13 |  |  | 293d | start no earlier than 2011-01-13 |  |  |  |
